# airbnb_henrique_joao

Schedule from MS Project, 2018-11-26 to 2019-09-27.

## Calendars

- Standard: Mon-Fri 08:00-12:00, 13:00-17:00; Sat-Sun off. Exceptions (off unless hours are given): 2018-12-01 (Restauração da Independência), 2018-12-08 (Dia da Imaculada Conceição), 2018-12-24 to 2018-12-26 (Festividade Natalicia), 2019-01-01 to 2019-01-02 (Comemoração Ano Novo), 2019-04-19 (Sexta-Feira Santa), 2019-04-21 (Páscoa), 2019-04-25 to 2019-04-26 (Dia da Liberdade - 25 de Abril ( dia 26 oferecido)), 2019-05-01 (Dia do Trabalhador), 2019-06-10 (Dia de Portugal), 2019-06-20 (Corpo de Deus), 2019-08-15 (Assunção de Nossa Senhora).

## Schedule

| ID | Task | Type | Duration | Start | Finish |
| --- | --- | --- | --- | --- | --- |
| 1 | Desenvolvimento da aplicação Airbnb | manual | 208d | 2018-11-26 | 2019-09-27 |
| 2 | Definição do projeto a desenvolver | manual | 0.38d | 2018-11-26 | 2018-11-26 |
| 3 | Reunião com cliente | manual | 3h | 2018-11-26 | 2018-11-26 |
| 4 | Análise e compra de recursos | manual | 6d | 2018-11-26 | 2018-12-04 |
| 5 | Identificação de ferramentas e recursos | manual | 2d | 2018-11-26 | 2018-11-28 |
| 6 | Escolha e compra de hardware | manual | 2d | 2018-11-28 | 2018-11-30 |
| 7 | Escolha e compra de software | manual | 2d | 2018-11-28 | 2018-11-30 |
| 8 | Arrendamento de escritório | manual | 3d | 2018-11-28 | 2018-12-03 |
| 9 | Análise de custos | manual | 1d | 2018-12-03 | 2018-12-04 |
| 10 | Análise do sistema | manual | 24d | 2018-12-04 | 2019-01-14 |
| 11 | Estudo do estado da arte | manual | 2d | 2018-12-04 | 2018-12-06 |
| 12 | Caracterização dos atores | manual | 8d | 2018-12-06 | 2018-12-18 |
| 13 | Diagrama dos casos de uso | manual | 7d | 2018-12-18 | 2019-01-03 |
| 14 | Requisistos funcionais e não funcionais | manual | 7d | 2019-01-03 | 2019-01-14 |
| 15 | Desenho do sistema | manual | 72.75d | 2019-01-14 | 2019-04-30 |
| 16 | Modelação de interfaces | manual | 20d | 2019-01-14 | 2019-02-11 |
| 17 | Storyboard da navegação | manual | 10d | 2019-01-14 | 2019-01-28 |
| 18 | Interfaces dos casos de uso | manual | 10d | 2019-01-28 | 2019-02-11 |
| 19 | Modelação da base de dados | manual | 20d | 2019-02-11 | 2019-03-11 |
| 20 | Diagrama E/R | manual | 10d | 2019-02-11 | 2019-02-25 |
| 21 | Modelo físico | manual | 10d | 2019-02-25 | 2019-03-11 |
| 22 | Modelação UML | manual | 20d | 2019-03-11 | 2019-04-08 |
| 23 | Diagrama de classes | manual | 10d | 2019-03-11 | 2019-03-25 |
| 24 | Diagramas de sequência | manual | 10d | 2019-03-25 | 2019-04-08 |
| 25 | Testes ao protótipo não funcional | manual | 12.75d | 2019-04-08 | 2019-04-30 |
| 26 | Planeamento dos testes | manual | 3d | 2019-04-08 | 2019-04-11 |
| 27 | Execução dos testes | manual | 5d | 2019-04-11 | 2019-04-18 |
| 28 | Análise de resultados | manual | 2d | 2019-04-18 | 2019-04-23 |
| 29 | Propostas de redesenho | manual | 2d | 2019-04-23 | 2019-04-29 |
| 30 | Apresentação do protótipo não funcional ao cliente | manual | 3h | 2019-04-29 | 2019-04-29 |
| 31 | Propostas de redesenho por parte do cliente | manual | 3h | 2019-04-29 | 2019-04-30 |
| 32 | Desenvolvimento e testes | manual | 87d | 2019-04-30 | 2019-09-04 |
| 33 | Execução da base de dados | manual | 10d | 2019-04-30 | 2019-05-15 |
| 34 | Desenvolvimento das interfaces | manual | 10d | 2019-04-30 | 2019-05-15 |
| 35 | Teste às interfaces | manual | 4d | 2019-05-15 | 2019-05-21 |
| 36 | Desenvolvimento da inserção de anúncios | manual | 15d | 2019-05-21 | 2019-06-12 |
| 37 | Testes à inserção de anúncios | manual | 3d | 2019-06-12 | 2019-06-17 |
| 38 | Desenvolvimento do arrendamento por parte dos utilizadores | manual | 15d | 2019-06-17 | 2019-07-09 |
| 39 | Testes aos arrendamento | manual | 3d | 2019-07-09 | 2019-07-12 |
| 40 | Desenvolvimento dos métodos de pagamento | manual | 15d | 2019-07-12 | 2019-08-02 |
| 41 | Testes aos métodos de pagamento | manual | 3d | 2019-08-02 | 2019-08-07 |
| 42 | Desenvolvimento de funções adicionais | manual | 10d | 2019-08-07 | 2019-08-22 |
| 43 | Teste às funções adicionais | manual | 3d | 2019-08-22 | 2019-08-27 |
| 44 | Agregação e implementação do software | manual | 6d | 2019-08-27 | 2019-09-04 |
| 45 | Controlo de qualidade | manual | 14d | 2019-09-04 | 2019-09-24 |
| 46 | Alpha testing | manual | 4d | 2019-09-04 | 2019-09-10 |
| 47 | Correção de erros | manual | 2d | 2019-09-10 | 2019-09-12 |
| 48 | Beta testing | manual | 4d | 2019-09-12 | 2019-09-18 |
| 49 | Correções finais | manual | 2d | 2019-09-18 | 2019-09-20 |
| 50 | Otimização do código | manual | 2d | 2019-09-20 | 2019-09-24 |
| 51 | Apresentação ao cliente | manual | 3.38d | 2019-09-24 | 2019-09-27 |
| 52 | Testes com o cliente | manual | 3h | 2019-09-24 | 2019-09-24 |
| 53 | Refinamento final | manual | 3d | 2019-09-24 | 2019-09-27 |
| 54 | Análise global sobre o desenvolvimento da plataforma | manual | 0.5d | 2019-09-27 | 2019-09-27 |
| 55 | Relatório da performance da equipa comparativamente com o cumprimentos das datas estipuladas para cada fase | manual | 2h | 2019-09-27 | 2019-09-27 |
| 56 | Relatório sobre os custos totais da aplicação | manual | 2h | 2019-09-27 | 2019-09-27 |
| 57 | Lançamento da aplicação | milestone, manual | 0d | 2019-09-27 | 2019-09-27 |
